# VACE-Controlling

Schedule from MS Project, 2006-10-16 to 2008-05-09.

## Calendars

- Standard: Mon-Fri 08:00-12:00, 13:00-17:00; Sat-Sun off.

## Schedule

| ID | WBS | Task | Type | Duration | Start | Finish | Predecessors | Total slack | Free slack | Constraint |
| --- | --- | --- | --- | --- | --- | --- | --- | --- | --- | --- |
| 1 | 1 | Projekt genehmigt | milestone | 0d | 2006-10-16 | 2006-10-16 |  | 232d | 0d | start no earlier than 2006-10-16 |
| 2 | 2 | Projektvorschlag erstellen |  | 6d | 2006-10-16 | 2006-10-23 | 1 | 249d | 0d | finish no earlier than 2006-10-23 |
| 3 | 3 | Projekt beauftragt | milestone | 0d | 2006-10-23 | 2006-10-23 | 2 | 232d | 4d | start no earlier than 2006-10-16 |
| 4 | 4 | Projekthandbuch erstellen |  | 6d | 2006-10-30 | 2006-11-06 | 3 | 228d | 0d | start no earlier than 2006-10-30 |
| 5 | 5 | Start | milestone | 0d | 2006-11-06 | 2006-11-06 | 4 | 228d | 1d | start no earlier than 2006-10-30 |
| 6 | 6 | Pflichtenheft erstellen |  | 14d | 2006-11-08 | 2006-11-27 | 5 | 244d | 0d | finish no earlier than 2006-11-27 |
| 7 | 7 | Altsystemanalyse erstellen |  | 15d | 2006-11-28 | 2006-12-18 | 6 | 227d | 0d | finish no earlier than 2006-12-18 |
| 8 | 8 | Systemspezifikation erstellen |  | 20d | 2006-12-19 | 2007-01-15 | 7 | 227d | 0d | finish no earlier than 2006-12-25 |
| 9 | 9 | SW-Spezifikation erstellen |  | 20d | 2007-01-16 | 2007-02-12 | 8 | 227d | 0d | finish no earlier than 2007-01-22 |
| 10 | 10 | System spezifiziert | milestone | 0d | 2007-02-12 | 2007-02-12 | 9 | 227d | 0d | start no earlier than 2007-01-22 |
| 11 | 11 | Systemarchitektur erstellen |  | 20d | 2007-02-13 | 2007-03-12 | 10 | 227d | 0d |  |
| 12 | 12 | SW-Architektur erstellen |  | 20d | 2007-03-13 | 2007-04-09 | 11 | 227d | 0d |  |
| 13 | 13 | Datenbankentwurf erstellen |  | 10d | 2007-04-10 | 2007-04-23 | 12 | 227d | 0d | finish no earlier than 2007-02-12 |
| 14 | 14 | Implementierungs-, Integrations und Prüfkonzept erstellen |  | 20d | 2007-04-24 | 2007-05-21 | 13 | 227d | 0d | finish no earlier than 2007-03-05 |
| 15 | 15 | System entworfen | milestone | 0d | 2007-05-21 | 2007-05-21 | 14 | 227d | 0d | start no earlier than 2007-05-21 |
| 16 | 16 | Prototyp entwerfen |  | 10d | 2007-05-22 | 2007-06-04 | 15 | 244d |  | finish no earlier than 2007-06-04 |
| 17 | 17 | Prototyp entworfen | milestone | 0d | 2007-06-04 | 2007-06-04 |  | 239d | 0d | start no earlier than 2007-06-04 |
| 18 | 18 | Präsentation |  | 6d | 2007-06-04 | 2007-06-11 | 17 | 239d |  |  |
| 19 | 19 | Start der Implementierung | milestone | 0d | 2007-09-17 | 2007-09-17 |  | 0d |  | start no earlier than 2007-09-17 |
| 20 | 20 | Datenbank aufsetzen/konfigurieren |  | 15d | 2007-09-17 | 2007-10-05 | 19 | 0d |  | finish no earlier than 2007-10-01 |
| 21 | 21 | **Entwerfen der Eingabeformulare/Masken** |  | 40d | 2007-10-08 | 2007-11-30 | 20 | 0d |  |  |
| 22 | 21.1 | Eingabe der Mitarbeiterdaten |  | 5d | 2007-10-08 | 2007-10-12 |  | 0d |  |  |
| 23 | 21.2 | Eingabe der Projektdaten |  | 5d | 2007-10-15 | 2007-10-19 | 22 | 0d |  |  |
| 24 | 21.3 | Eingabe der Fremdleistungen |  | 5d | 2007-10-22 | 2007-10-26 | 23 | 0d |  |  |
| 25 | 21.4 | Einlesen der Konditionen für Mitarbeiter |  | 5d | 2007-10-29 | 2007-11-02 | 24 | 0d |  |  |
| 26 | 21.5 | Eingabe der eingegangenen Zahlungen |  | 5d | 2007-11-05 | 2007-11-09 | 25 | 0d |  |  |
| 27 | 21.6 | Eingabe der produktiven Stunden |  | 5d | 2007-11-12 | 2007-11-16 | 26 | 0d |  |  |
| 28 | 21.7 | Eingabe der unproduktiven Stunden |  | 5d | 2007-11-19 | 2007-11-23 | 27 | 0d |  |  |
| 29 | 21.8 | Stundenkontrolle |  | 5d | 2007-11-26 | 2007-11-30 | 28 | 0d |  |  |
| 30 | 22 | Generieren der Zeiterfassungs-Excel Sheets |  | 20d | 2007-12-03 | 2007-12-28 | 21 | 0d |  |  |
| 31 | 23 | Generieren von Berichten |  | 25d | 2007-12-31 | 2008-02-01 | 30 | 0d |  |  |
| 32 | 24 | Zusammenfügen aller Funktionen |  | 30d | 2008-02-04 | 2008-03-14 | 31 | 0d |  |  |
| 33 | 25 | Testen |  | 15d | 2008-03-17 | 2008-04-04 | 32 | 0d |  |  |
| 34 | 26 | Systemende realisiert | milestone | 0d | 2008-04-04 | 2008-04-04 | 33 | 0d |  | start no earlier than 2007-03-26 |
| 35 | 27 | System in den Betrieb einführen |  | 10d | 2008-04-07 | 2008-04-18 | 34 | 0d |  |  |
| 36 | 28 | Testbetrieb |  | 5d | 2008-04-21 | 2008-04-25 | 35 | 0d |  |  |
| 37 | 29 | Dokumentation erstellen |  | 5d | 2008-04-28 | 2008-05-02 | 36 | 0d |  |  |
| 38 | 30 | System integriert | milestone | 0d | 2008-05-02 | 2008-05-02 | 37 | 0d |  | start no earlier than 2008-05-01 |
| 39 | 31 | Lieferung durchführen |  | 5d | 2008-05-05 | 2008-05-09 | 38 | 0d |  |  |
| 40 | 32 | Lieferung durchgeführt | milestone | 0d | 2008-05-09 | 2008-05-09 | 39 | 0d |  | start no earlier than 2008-05-01 |
| 41 | 33 | Abnahme erfolgt | milestone | 0d | 2008-05-09 | 2008-05-09 | 40 | 0d |  | start no earlier than 2008-05-08 |
| 42 | 34 | Projektende | milestone | 0d | 2008-05-09 | 2008-05-09 | 41 | 0d |  | start no earlier than 2008-05-08 |
